# 2017_03_29_Planning

How a schedule from MS Project changed from version to version. A marks actual dates.

## Version 1 (data date 2017-03-27, saved 2017-06-20)

Note of the change: SD Card and Docu

| ID | WBS | Task | Duration | Start | Finish | Predecessors | Complete | Total float | Constraint |
| --- | --- | --- | --- | --- | --- | --- | --- | --- | --- |
| 1 | 1 | **[Projekt] Modellbasierte Entwicklung** | 45d | 2017-03-21 A | 2017-09-08 |  | 44% | 0d |  |
| 2 | 1.1 | **[Phase] Analyse und Planung** | 2d | 2017-03-21 A | 2017-03-29 A |  | 100% |  |  |
| 3 | 1.1.1 | **[AP] Analyse** | 1.25d | 2017-03-21 A | 2017-03-25 A |  | 100% |  |  |
| 4 |  | Bestehende Arbeiten analysieren | 4h | 2017-03-21 A | 2017-03-22 A |  | 100% |  |  |
| 5 |  | Entwicklungsumgebung aufsetzen | 6h | 2017-03-22 A | 2017-03-25 A | 4 | 100% |  |  |
| 6 | 1.1.2 | **[AP] Projektplanung** | 0.5d | 2017-03-25 A | 2017-03-27 A | 3 | 100% |  |  |
| 7 |  | Initiale Projektplanung | 0.5d | 2017-03-25 A | 2017-03-27 A |  | 100% |  |  |
| 8 | 1.1.3 | **[AP] Dokumentation** | 0.25d | 2017-03-29 A | 2017-03-29 A | 6 | 100% |  |  |
| 9 |  | Bericht erstellen | 2h | 2017-03-29 A | 2017-03-29 A |  | 100% |  |  |
| 10 |  | [MS] Projektplanung abgeschlossen | 0d | 2017-03-27 A | 2017-03-27 A | 2 | 100% |  | finish no earlier than 2017-03-29 |
| 11 | 1.3 | **[Phase] C++ Portierung** | 3.75d | 2017-03-29 A | 2017-04-12 A | 2 | 100% |  |  |
| 12 | 1.3.1 | **[AP] Laborübungen nach C++ portieren** | 2.25d | 2017-03-29 A | 2017-04-05 A |  | 100% |  |  |
| 13 |  | C++ Tutorial Willert | 2h | 2017-03-29 A | 2017-03-29 A |  | 100% |  |  |
| 14 |  | Übungen 1-3 | 4h | 2017-03-29 A | 2017-04-01 A | 13 | 100% |  |  |
| 15 |  | Übungen 4-6 | 6h | 2017-04-01 A | 2017-04-05 A | 14 | 100% |  |  |
| 16 |  | Übungen 7-9 | 4h | 2017-04-05 A | 2017-04-05 A | 15 | 100% |  |  |
| 17 | 1.3.2 | **[AP] Observer** | 1d | 2017-04-05 A | 2017-04-10 A | 12 | 100% |  |  |
| 18 |  | Einarbeitung | 4h | 2017-04-05 A | 2017-04-08 A |  | 100% |  |  |
| 19 |  | Implementierung | 1d | 2017-04-05 A | 2017-04-10 A |  | 100% |  |  |
| 20 | 1.3.3 | **[AP] Dokumentation** | 0.5d | 2017-04-12 A | 2017-04-12 A | 17 | 100% |  |  |
| 21 |  | Bericht erstellen | 4h | 2017-04-12 A | 2017-04-12 A |  | 100% |  |  |
| 22 |  | [MS] Bestehendes Labor portiert | 0d | 2017-04-12 A | 2017-04-12 A | 11 | 100% |  |  |
| 23 | 1.5 | **[Phase] Implementierung** | 29d | 2017-04-12 A | 2017-08-21 | 22 | 50% | 0.17d |  |
| 24 | 1.5.1 | **[AP] Ethernet** | 11d | 2017-04-12 A | 2017-05-24 A |  | 100% |  |  |
| 25 |  | Bestehende Arbeit analysieren | 1d | 2017-04-12 A | 2017-04-16 A |  | 100% |  |  |
| 26 |  | Keil Projekt konfigurieren | 4d | 2017-04-12 A | 2017-04-26 A | 25 | 100% |  |  |
| 27 |  | Rhapsody Implementierung | 4d | 2017-04-25 A | 2017-05-10 A | 26 | 100% |  |  |
| 28 |  | Dokumentation | 4d | 2017-05-10 A | 2017-05-24 A | 27 | 100% |  |  |
| 29 | 1.5.2 | **[AP] SD-Karte** | 7d | 2017-05-06 A | 2017-06-03 | 24 | 71% | 0.17d |  |
| 30 |  | Keil Projekt konfigurieren | 3d | 2017-05-06 A | 2017-05-17 A |  | 100% |  |  |
| 31 |  | Rhapsody Implementierung | 2d | 2017-05-27 A | 2017-06-03 A | 30 | 100% |  |  |
| 32 |  | Dokumentation | 2d | 2017-05-27 | 2017-06-03 |  |  | 0.17d |  |
| 33 | 1.5.3 | **[AP] WLAN** | 16d | 2017-06-03 | 2017-08-21 | 29 |  | 0.17d |  |
| 34 |  | WLAN Anbindung analysieren | 3d | 2017-06-03 | 2017-07-18 |  |  | 0.17d |  |
| 35 |  | Inbetriebnahme ESP8266 | 2d | 2017-07-18 | 2017-07-24 | 34 |  | 0.17d |  |
| 36 |  | Keil Projekt konfigurieren | 4d | 2017-07-25 | 2017-08-02 | 35 |  | 0.17d |  |
| 37 |  | Rhapsody Implementierung | 4d | 2017-08-02 | 2017-08-13 | 36 |  | 0.17d |  |
| 38 |  | Dokumentation | 3d | 2017-08-14 | 2017-08-21 | 37 |  | 0.17d |  |
| 39 |  | [MS] Neue Features implementiert | 0d | 2017-08-21 | 2017-08-21 | 23 |  | 0.17d |  |
| 40 | 1.7 | **[Phase] Test** | 6.25d | 2017-08-22 A | 2017-09-04 | 39 | 3% | 0d |  |
| 41 | 1.7.1 | **[AP] Test Conductor** | 6.25d | 2017-08-22 A | 2017-09-04 |  | 3% | 0d |  |
| 42 |  | Webinar Willert | 2h | 2017-08-22 A | 2017-08-22 A |  | 100% |  |  |
| 43 |  | Analyse Test Conductor | 2d | 2017-08-22 | 2017-08-26 | 42 |  | 0d |  |
| 44 |  | Modellbasierter Test für Laborübung implementieren | 4d | 2017-08-26 | 2017-09-04 | 43 |  | 0d |  |
| 45 |  | Dokumentation | 3d | 2017-08-22 | 2017-08-29 |  |  | 3.25d |  |
| 46 |  | [MS] Übungen modellbasiert verifiziert | 0d | 2017-09-04 | 2017-09-04 | 40 |  | 0d |  |
| 47 | 1.9 | **[Phase] Dokumentation** | 4d | 2017-09-04 | 2017-09-08 | 46 |  | 0d |  |
| 48 | 1.9.1 | **[AP] Bericht** | 2d | 2017-09-04 | 2017-09-06 |  |  | 0d |  |
| 49 |  | Erstellen | 2d | 2017-09-04 | 2017-09-06 |  |  | 0d |  |
| 50 | 1.9.2 | **[AP] Präsentation** | 2d | 2017-09-06 | 2017-09-08 | 48 |  | 0d |  |
| 51 |  | Erstellen | 2d | 2017-09-06 | 2017-09-08 |  |  | 0d |  |
| 52 |  | [MS] Dokumentation vollständig | 0d | 2017-09-08 | 2017-09-08 | 47 |  | 0d |  |

## Version 2 (data date 2017-03-27, saved 2017-08-03)

Note of the change: Finished WiFi

Last finish stays 2017-09-08. Complete tasks 20 → 25.

Changed:

| ID | Task | Start | Finish | Complete | Total float |
| --- | --- | --- | --- | --- | --- |
| 1 | **[Projekt] Modellbasierte Entwicklung** |  |  | 44% → 71% |  |
| 23 | **[Phase] Implementierung** |  |  | 50% → 92% |  |
| 29 | **[AP] SD-Karte** |  | 2017-06-03 A | 71% → 100% | 0.17d → none |
| 32 | Dokumentation | 2017-05-27 A | 2017-06-03 A | 0% → 100% | 0.17d → none |
| 33 | **[AP] WLAN** | 2017-06-03 A |  | 0% → 81% |  |
| 34 | WLAN Anbindung analysieren | 2017-06-03 A | 2017-07-18 A | 0% → 100% | 0.17d → none |
| 35 | Inbetriebnahme ESP8266 | 2017-07-18 A | 2017-07-24 A | 0% → 100% | 0.17d → none |
| 36 | Keil Projekt konfigurieren | 2017-07-25 A | 2017-08-02 A | 0% → 100% | 0.17d → none |
| 37 | Rhapsody Implementierung | 2017-08-02 A | 2017-08-13 A | 0% → 100% | 0.17d → none |
